# CardioGuardian

Schedule from MS Project, 2021-05-05 to 2023-05-05.
Plan projekta razvoja novog hardversko-softversko
ETF

## Calendars

- Standard: Mon-Fri 08:00-12:00, 13:00-17:00; Sat-Sun off. Exceptions (off unless hours are given): 2022-01-01 (Nova godina 2022), 2022-01-07 (Božić 2022), 2022-02-15 to 2022-02-16 (Sretenje - Dan državnosti 2022), 2022-03-17 (Saint Patrick's Day 2022), 2022-04-17 (Katolički Uskrs 2022), 2022-04-24 (Uskrs 2022), 2022-05-01 (Praznik rada 2022), 2022-08-01 (Swiss National Holiday 2022), 2022-11-11 (Dan primirja u I svetskom ratu 2022), 2022-12-25 (Katolički Božić 2022), 2023-01-01 (Nova godina 2023), 2023-01-07 (Božić 2023), 2023-02-15 to 2023-02-16 (Sretenje - Dan državnosti 2023), 2023-03-17 (Saint Patrick's Day 2023), 2023-04-16 (Uskrs 2023), 2023-04-17 (Katolički Uskrs 2023), 2023-05-01 (Praznik rada 2023).

## Schedule

| ID | WBS | Task | Duration | Start | Finish | Predecessors | Total slack | Free slack | Constraint |
| --- | --- | --- | --- | --- | --- | --- | --- | --- | --- |
| 1 | 1 | **WP1 - Upravljanje projektom** | 511d | 2021-05-05 | 2023-05-05 |  | 0d |  |  |
| 2 | 1.1 | **Organizacija početnog sastanka** | 5d | 2021-05-05 | 2021-05-12 |  | 6d | 0d |  |
| 3 | 1.1.1 | Dogovor u vezi datuma sastanka sa svim predstavnicima participanata | 1d | 2021-05-05 | 2021-05-06 |  | 6d | 0d |  |
| 4 | 1.1.2 | Ugovaranje smeštaja i prevoza za participante | 1d | 2021-05-06 | 2021-05-07 | 3 | 6d | 0d | start no earlier than 2021-05-06 |
| 5 | 1.1.3 | Zakup prostora i početak pripreme plana sastanka | 1d | 2021-05-07 | 2021-05-10 | 4 | 6d | 0d |  |
| 6 | 1.1.4 | Razvoj plana sastanka | 1d | 2021-05-10 | 2021-05-11 | 5 | 6d | 0d |  |
| 7 | 1.1.5 | Završetak organizacije sastanka | 1d | 2021-05-11 | 2021-05-12 | 6 | 6d |  |  |
| 8 | 1.2 | **Kick-off sastanak** | 5d | 2021-05-12 | 2021-05-19 | 2 | 6d | 0d |  |
| 9 | 1.2.1 | Upoznavanje članova i pregled ciljeva projekta | 1d | 2021-05-12 | 2021-05-13 |  | 6d | 0d |  |
| 10 | 1.2.2 | Pregled budzeta | 2d | 2021-05-13 | 2021-05-17 | 9 | 6d | 0d |  |
| 11 | 1.2.3 | Podela posla i definisanje rokova | 2d | 2021-05-17 | 2021-05-19 | 10 | 6d |  |  |
| 12 | 1.3 | **Upravljanje timovima** | 5d | 2021-05-19 | 2021-05-26 | 8 | 6d | 0d |  |
| 13 | 1.3.1 | Formiranje timova | 3d | 2021-05-19 | 2021-05-24 |  | 2d |  |  |
| 14 | 1.3.2 | Međusobno upoznavanje | 3d | 2021-05-19 | 2021-05-24 |  | 2d |  |  |
| 15 | 1.3.3 | Predstavljanje rasporeda dnevnih, nedeljnih i mesečnih sastanaka | 3d | 2021-05-19 | 2021-05-24 |  | 2d |  |  |
| 16 | 1.3.4 | Pojedinačno predstavljanje | 3d | 2021-05-19 | 2021-05-24 |  | 6d | 0d |  |
| 17 | 1.3.5 | Objašnjavanje strukture projekta članovima | 2d | 2021-05-24 | 2021-05-26 | 16 | 6d |  |  |
| 18 | 1.3.6 | Uspostavljanje pravila tima | 2d | 2021-05-24 | 2021-05-26 | 16 | 6d |  |  |
| 19 | 1.3.7 | Uspostavljanje dnevne rutine | 2d | 2021-05-24 | 2021-05-26 | 16 | 6d |  |  |
| 20 | 1.3.8 | Uspostavljanje načina komunikacije | 2d | 2021-05-24 | 2021-05-26 | 16 | 6d |  |  |
| 21 | 1.4 | **Logistika** | 490d | 2021-05-26 | 2023-04-26 | 12 | 6d |  |  |
| 22 | 1.4.1 | Podela odgovornosti i pisanje RASCI matrice | 7d | 2021-05-26 | 2021-06-04 |  | 6d | 0d |  |
| 23 | 1.4.2 | Definisanje parametara za praćenje napretka projekta | 3d | 2021-06-04 | 2021-06-09 | 22 | 6d | 0d |  |
| 24 | 1.4.3 | Pisanje neophodnih dokumenata | 5d | 2021-06-09 | 2021-06-16 | 23 | 433d | 0d |  |
| 25 | 1.4.4 | Pisanje PBS i RBS | 15d | 2021-06-16 | 2021-07-07 | 24 | 433d | 0d |  |
| 26 | 1.4.5 | Definisanje merljivosti i definicije završenog | 6d | 2021-07-07 | 2021-07-15 | 25 | 433d | 0d |  |

| ID | WBS | Task | Type | Duration | Start | Finish | Predecessors | Total slack | Free slack | Constraint |
| --- | --- | --- | --- | --- | --- | --- | --- | --- | --- | --- |
| 27 | 1.4.6 | **Kvalitet** |  | 15d | 2021-07-15 | 2021-08-05 | 26 | 433d | 0d |  |
| 28 | 1.4.6.1 | Planiranje kvaliteta |  | 12d | 2021-07-15 | 2021-08-02 |  | 433d | 0d |  |
| 29 | 1.4.6.2 | Postavljanje standarda kvaliteta |  | 3d | 2021-08-02 | 2021-08-05 | 28 | 433d |  |  |
| 30 | 1.4.7 | **Menadžment rizika** |  | 12d | 2021-08-05 | 2021-08-23 | 27 | 433d |  |  |
| 31 | 1.4.7.1 | Detaljna analiza do sada pronaćenih rizika |  | 5d | 2021-08-05 | 2021-08-12 | 27 | 433d | 0d |  |
| 32 | 1.4.7.2 | Formiranje metoda za ublažavanje ili eliminisanje rizika |  | 5d | 2021-08-12 | 2021-08-19 | 31 | 433d | 0d |  |
| 33 | 1.4.7.3 | Upozoravanje članova tima sa predviđenim rizicima |  | 2d | 2021-08-19 | 2021-08-23 | 32 | 433d |  |  |
| 34 | 1.4.8 | **Kontrola i monitoring** |  | 480d | 2021-06-09 | 2023-04-26 | 23 | 6d |  |  |
| 35 | 1.4.8.1 | Praćenje napretka projekta |  | 480d | 2021-06-09 | 2023-04-26 |  | 6d |  |  |
| 36 | 1.4.8.2 | Održavanje redovnih sastanaka |  | 480d | 2021-06-09 | 2023-04-26 |  | 6d |  |  |
| 37 | 1.4.8.3 | Upravljanje kvalitetom |  | 480d | 2021-06-09 | 2023-04-26 |  | 6d |  |  |
| 38 | 1.4.8.4 | Rešavanje nepredviđenih situacija |  | 480d | 2021-06-09 | 2023-04-26 |  | 6d |  |  |
| 39 | 1.4.8.5 | Upravljanje javnim nabavkama |  | 480d | 2021-06-09 | 2023-04-26 |  | 6d |  |  |
| 40 | 1.4.8.6 | Praćenje rashoda |  | 480d | 2021-06-09 | 2023-04-26 |  | 6d |  |  |
| 41 | 1.4.8.7 | Kontrola rezultata radnih paketa |  | 480d | 2021-06-09 | 2023-04-26 |  | 6d |  |  |
| 42 | 1.4.8.8 | Održavanje liste problema |  | 480d | 2021-06-09 | 2023-04-26 |  | 6d |  |  |
| 43 | 1.4.8.9 | Praćenje rizika |  | 480d | 2021-06-09 | 2023-04-26 |  | 6d |  |  |
| 44 | 1.4.8.10 | Obrada feedbacka od radnika |  | 480d | 2021-06-09 | 2023-04-26 |  | 6d |  |  |
| 45 | 1.5 | **Održavanje sastanaka o napretku na projektu** |  | 511d | 2021-05-05 | 2023-05-05 |  |  |  |  |
| 46 | 1.5.1 | **Sastanak nakon prvih 6 meseci** |  | 1d | 2021-11-05 | 2021-11-08 |  |  |  |  |
| 47 | 1.5.1.1 | M1: Izveštaj o napretku na projektu 1.1 | milestone | 0d | 2021-11-08 | 2021-11-08 |  | 378d |  | start no earlier than 2021-11-08 |
| 48 | 1.5.2 | **Sastanak nakon drugih 6 meseci** |  | 1d | 2022-05-05 | 2022-05-06 |  |  |  |  |
| 49 | 1.5.2.1 | M2: Izveštaj o napretku na projektu 1.2 | milestone | 0d | 2022-05-06 | 2022-05-06 |  | 253d |  | start no earlier than 2022-05-06 |
| 50 | 1.5.3 | **Sastanak nakon trećih 6 meseci** |  | 1d | 2022-11-05 | 2022-11-07 |  |  |  |  |
| 51 | 1.5.3.1 | M3: Izveštaj o napretku na projektu 2.1 | milestone | 0d | 2022-11-07 | 2022-11-07 |  | 123d |  | start no earlier than 2022-11-07 |

| ID | WBS | Task | Type | Duration | Start | Finish | Predecessors | Total slack | Free slack | Constraint |
| --- | --- | --- | --- | --- | --- | --- | --- | --- | --- | --- |
| 52 | 1.5.4 | **Sastanak nakon poslednjih 6 meseci** |  | 1d | 2023-05-03 | 2023-05-04 |  |  |  |  |
| 53 | 1.5.4.1 | M4: Izveštaj o napretku na projektu 2.2 | milestone | 0d | 2023-05-04 | 2023-05-04 |  | 1d |  | start no earlier than 2023-05-04 |
| 54 | 1.5.5 | **Organizaija Brainstorming-a** |  | 5d | 2022-04-27 | 2022-05-04 |  |  |  |  |
| 55 | 1.5.5.1 | Dogovor u vezi datuma sastanka sa svim predstavnicima participanata |  | 1d | 2022-04-27 | 2022-04-28 |  | 248d | 0d |  |
| 56 | 1.5.5.2 | Ugovaranje smeštaja i prevoza za participante |  | 1d | 2022-04-28 | 2022-04-29 | 55 | 248d | 0d |  |
| 57 | 1.5.5.3 | Zakup prostora i početak pripreme plana sastanka |  | 1d | 2022-04-29 | 2022-05-02 | 56 | 248d | 0d |  |
| 58 | 1.5.5.4 | Razvoj plana sastanka |  | 1d | 2022-05-02 | 2022-05-03 | 57 | 248d | 0d |  |
| 59 | 1.5.5.5 | Završetak organizacije sastanka |  | 1d | 2022-05-03 | 2022-05-04 | 58 | 248d |  |  |
| 60 | 1.5.6 | Održavanje Brainstorming-a |  | 7d | 2022-05-04 | 2022-05-13 | 54 | 248d |  |  |
| 61 | 1.5.7 | **Organizacija završnog sastanka** |  | 5d | 2023-04-18 | 2023-04-25 |  |  |  |  |
| 62 | 1.5.7.1 | Dogovor u vezi datuma sastanka sa svim predstavnicima participanata |  | 1d | 2023-04-18 | 2023-04-19 |  | 7d | 0d |  |
| 63 | 1.5.7.2 | Ugovaranje smeštaja i prevoza za participante |  | 1d | 2023-04-19 | 2023-04-20 | 62 | 7d | 0d |  |
| 64 | 1.5.7.3 | Zakup prostora i početak pripreme plana sastanka |  | 1d | 2023-04-20 | 2023-04-21 | 63 | 7d | 0d |  |
| 65 | 1.5.7.4 | Razvoj plana sastanka |  | 1d | 2023-04-21 | 2023-04-24 | 64 | 7d | 0d |  |
| 66 | 1.5.7.5 | Završetak organizacije sastanka |  | 1d | 2023-04-24 | 2023-04-25 | 65 | 7d |  |  |
| 67 | 1.5.8 | **Održavanje završnog sastanka** |  | 5d | 2023-04-27 | 2023-05-05 | 61 |  |  |  |
| 68 | 1.5.8.1 | M5: Konačan izveštaj celokupnog projekta | milestone | 0d | 2023-05-05 | 2023-05-05 |  | 0d |  | start no earlier than 2023-05-05 |
| 69 | 2 | **WP2 - Analiza korisničkih zahteva** |  | 87d | 2021-05-05 | 2021-09-03 |  | 6d | 0d |  |
| 70 | 2.1 | **Ispitivanje i analiza dosadašnjih postignuća** |  | 24d | 2021-05-05 | 2021-06-08 |  | 6d | 0d |  |
| 71 | 2.1.1 | **Odlazak u Budimpeštu** |  | 7d | 2021-05-05 | 2021-05-14 |  | 6d | 0d |  |
| 72 | 2.1.1.1 | Sastanak sa autorima naučnih radova |  | 7d | 2021-05-05 | 2021-05-14 |  | 6d |  |  |
| 73 | 2.1.1.2 | Obilazak bolnice |  | 7d | 2021-05-05 | 2021-05-14 |  | 6d |  |  |
| 74 | 2.1.2 | **Odlazak u Bazel** |  | 7d | 2021-05-14 | 2021-05-25 | 71 | 6d | 0d |  |
| 75 | 2.1.2.1 | Sastanak sa autorima naučnih radova |  | 7d | 2021-05-14 | 2021-05-25 |  | 6d |  |  |
| 76 | 2.1.2.2 | Obilazak bolnice |  | 7d | 2021-05-14 | 2021-05-25 |  | 6d |  |  |
| 77 | 2.1.3 | Testiranje dosadašnjih postignuća |  | 10d | 2021-05-25 | 2021-06-08 | 71, 74 | 6d |  |  |

| ID | WBS | Task | Duration | Start | Finish | Predecessors | Total slack | Free slack |
| --- | --- | --- | --- | --- | --- | --- | --- | --- |
| 78 | 2.2 | **Sprovođenje anketa korisnika** | 15d | 2021-06-08 | 2021-06-29 | 70 | 6d | 0d |
| 79 | 2.2.1 | Odabir lokacija za sprovođenje ankete | 3d | 2021-06-08 | 2021-06-11 |  | 18d |  |
| 80 | 2.2.2 | Formiranje pitanja | 5d | 2021-06-08 | 2021-06-15 |  | 6d | 0d |
| 81 | 2.2.3 | Prikupljanje odgovora | 10d | 2021-06-15 | 2021-06-29 | 80 | 6d |  |
| 82 | 2.3 | **Analiza odgovora anketa** | 10d | 2021-06-29 | 2021-07-13 | 78 | 6d | 0d |
| 83 | 2.3.1 | Unošenje rezultata | 5d | 2021-06-29 | 2021-07-06 |  | 6d | 0d |
| 84 | 2.3.2 | Generisanje grafikona odgovora | 2d | 2021-07-06 | 2021-07-08 | 83 | 6d | 0d |
| 85 | 2.3.3 | Analiza grafikona | 3d | 2021-07-08 | 2021-07-13 | 84 | 6d |  |
| 86 | 2.4 | **Definisanje potrebnih funkcionalnosti softvera** | 17d | 2021-07-13 | 2021-08-05 | 82 | 6d | 0d |
| 87 | 2.4.1 | Definisanje glavnih korisničkih funkcionalnosti | 10d | 2021-07-13 | 2021-07-27 |  | 6d | 0d |
| 88 | 2.4.2 | Konsultacije sa lekarima | 10d | 2021-07-13 | 2021-07-27 |  | 13d |  |
| 89 | 2.4.3 | Definisanje dodatnih funkcionalnosti | 7d | 2021-07-27 | 2021-08-05 | 87 | 6d |  |
| 90 | 2.5 | **Definisanje potrebnih funkcionalnosti hardvera** | 17d | 2021-08-05 | 2021-08-30 | 86 | 6d | 0d |
| 91 | 2.5.1 | Definisanje glavnih korisničkih funkcionalnosti | 10d | 2021-08-05 | 2021-08-19 |  | 6d | 0d |
| 92 | 2.5.2 | Konsultacije sa lekarima | 10d | 2021-08-05 | 2021-08-19 |  | 13d |  |
| 93 | 2.5.3 | Definisanje dodatnih funkcionalnosti | 7d | 2021-08-19 | 2021-08-30 | 91 | 6d |  |
| 94 | 2.6 | **Izbor odgovarajućeg PMLC modela** | 4d | 2021-08-30 | 2021-09-03 | 90, 86 | 6d |  |
| 95 | 2.6.1 | Analiza potrebnog tima | 3d | 2021-08-30 | 2021-09-02 |  | 6d | 0d |
| 96 | 2.6.2 | Analiza dinamike postojećih timova | 3d | 2021-08-30 | 2021-09-02 |  | 6d | 0d |
| 97 | 2.6.3 | Odabir konkretnog modela | 1d | 2021-09-02 | 2021-09-03 | 95, 96 | 6d |  |
| 98 | 3 | **WP3 - Analiza i detalji dizajna sistema** | 64d | 2021-09-03 | 2021-12-02 | 69 | 6d | 0d |
| 99 | 3.1 | Identifikovanje komponenti sistema | 10d | 2021-09-03 | 2021-09-17 |  | 6d | 0d |
| 100 | 3.2 | **Dizajn celokupnog sistema** | 14d | 2021-09-17 | 2021-10-07 | 99 | 6d | 0d |
| 101 | 3.2.1 | Dizajn softverskih komponenti | 14d | 2021-09-17 | 2021-10-07 |  | 6d |  |
| 102 | 3.2.2 | Dizajn hardverskih komponenti | 14d | 2021-09-17 | 2021-10-07 |  | 6d |  |

| ID | WBS | Task | Type | Duration | Start | Finish | Predecessors | Total slack | Free slack |
| --- | --- | --- | --- | --- | --- | --- | --- | --- | --- |
| 103 | 3.3 | **Detaljan dizajn sistema** |  | 10d | 2021-10-07 | 2021-10-21 | 100 | 6d | 0d |
| 104 | 3.3.1 | Detaljan dizajn softverskih komponenti |  | 10d | 2021-10-07 | 2021-10-21 |  | 6d |  |
| 105 | 3.3.2 | Detaljan dizajn hardverskih komponenti |  | 10d | 2021-10-07 | 2021-10-21 |  | 6d |  |
| 106 | 3.4 | Izrada prototipa |  | 30d | 2021-10-21 | 2021-12-02 | 103 | 6d | 0d |
| 107 | 3.5 | M6: Prototip | milestone | 0d | 2021-12-02 | 2021-12-02 | 106 | 6d |  |
| 108 | 4 | **WP4 - Razvijanje hardverske komponente (uređaja)** |  | 186d | 2021-12-02 | 2022-08-26 | 98 | 174d |  |
| 109 | 4.1 | Odlazak u Dablin - tim bilding |  | 10d | 2021-12-02 | 2021-12-16 |  | 174d | 0d |
| 110 | 4.2 | Razvoj senzora |  | 30d | 2021-12-16 | 2022-01-28 | 109 | 289d | 115d |
| 111 | 4.3 | Razvoj procesora |  | 60d | 2021-12-16 | 2022-03-15 | 109 | 174d | 0d |
| 112 | 4.4 | Razvoj jedinice za napajanje |  | 15d | 2022-03-15 | 2022-04-06 | 111 | 174d | 0d |
| 113 | 4.5 | Razvoj dodatnih hardverskih jedinica |  | 70d | 2022-04-06 | 2022-07-13 | 112 | 174d | 0d |
| 114 | 4.6 | **Testiranje hardverske komponente** |  | 31d | 2022-07-13 | 2022-08-26 | 110, 111, 112, 113 | 174d | 0d |
| 115 | 4.6.1 | Testiranje funkcionalnosti |  | 21d | 2022-07-13 | 2022-08-12 |  | 174d | 0d |
| 116 | 4.6.2 | Identifikovanje potencijalnih nedostataka |  | 7d | 2022-08-12 | 2022-08-23 | 115 | 177d |  |
| 117 | 4.6.3 | Ispitivanje verovatnoće kvara |  | 10d | 2022-08-12 | 2022-08-26 | 115 | 174d |  |
| 118 | 4.6.4 | Ispitivanje životnog veka uređaja |  | 5d | 2022-08-12 | 2022-08-19 | 115 | 179d |  |
| 119 | 4.7 | M7: Hardverski uređaj | milestone | 0d | 2022-08-26 | 2022-08-26 | 114 | 174d |  |
| 120 | 5 | **WP5 - Razvijanje softverske komponente** |  | 186d | 2021-12-02 | 2022-08-26 | 98 | 6d | 0d |
| 121 | 5.1 | Odlazak u Cirih - tim bilding |  | 10d | 2021-12-02 | 2021-12-16 |  | 182d |  |
| 122 | 5.2 | **Upravljanje nabavkama** |  | 14d | 2021-12-02 | 2021-12-22 |  | 6d | 0d |
| 123 | 5.2.1 | Raspisivanje nabavke |  | 5d | 2021-12-02 | 2021-12-09 |  | 6d | 0d |
| 124 | 5.2.2 | Evaluacija nabavke |  | 3d | 2021-12-09 | 2021-12-14 | 123 | 6d | 0d |
| 125 | 5.2.3 | Izbor dobavljača |  | 3d | 2021-12-14 | 2021-12-17 | 124 | 6d | 0d |
| 126 | 5.2.4 | Ugovaranje sa dobavljačem |  | 3d | 2021-12-17 | 2021-12-22 | 125 | 6d |  |
| 127 | 5.3 | Osposobljavanje servera |  | 18d | 2021-12-22 | 2022-01-18 | 122 | 6d | 0d |
| 128 | 5.4 | Realizacija baze podataka |  | 20d | 2022-01-18 | 2022-02-17 | 127 | 6d | 0d |

| ID | WBS | Task | Type | Duration | Start | Finish | Predecessors | Total slack | Free slack |
| --- | --- | --- | --- | --- | --- | --- | --- | --- | --- |
| 129 | 5.5 | **Obučavanje neuralne mreže** |  | 71d | 2022-02-17 | 2022-05-30 | 128 | 6d | 0d |
| 130 | 5.5.1 | Priprema podataka, čišćenje i otklanjanje grešaka |  | 12d | 2022-02-17 | 2022-03-07 |  | 6d | 0d |
| 131 | 5.5.2 | Vizuelizacija podataka i analiza |  | 14d | 2022-03-07 | 2022-03-28 | 130 | 6d | 0d |
| 132 | 5.5.3 | Treniranje modela - podešavanje hiperparametara |  | 35d | 2022-03-28 | 2022-05-16 | 131 | 6d | 0d |
| 133 | 5.5.4 | Testiranje modela |  | 10d | 2022-05-16 | 2022-05-30 | 132 | 6d |  |
| 134 | 5.6 | Realizacija aplikacije |  | 35d | 2022-05-30 | 2022-07-18 | 129 | 6d | 0d |
| 135 | 5.7 | **Testiranje softverske komponente** |  | 28d | 2022-07-18 | 2022-08-26 | 134 | 6d | 0d |
| 136 | 5.7.1 | Testiranje funkcionalnosti |  | 21d | 2022-07-18 | 2022-08-17 |  | 6d | 0d |
| 137 | 5.7.2 | Pronalaženje nedostataka i njihovo otklanjanje |  | 7d | 2022-08-17 | 2022-08-26 | 136 | 6d |  |
| 138 | 5.8 | M8: Aplikacija | milestone | 0d | 2022-08-26 | 2022-08-26 | 134, 135 | 6d |  |
| 139 | 6 | **WP6 - Integracija sistema** |  | 60d | 2022-08-26 | 2022-11-21 | 120 | 6d | 0d |
| 140 | 6.1 | Integracija softverske komponente |  | 20d | 2022-08-26 | 2022-09-23 |  | 6d | 0d |
| 141 | 6.2 | Integracija hardverske komponente |  | 20d | 2022-09-23 | 2022-10-21 | 140 | 6d | 0d |
| 142 | 6.3 | M9: Izveštaj uspešnosti integracije | milestone | 0d | 2022-10-21 | 2022-10-21 | 140, 141 | 26d |  |
| 143 | 6.4 | Integracija celokupnog sistema |  | 20d | 2022-10-21 | 2022-11-21 | 141 | 6d | 0d |
| 144 | 6.5 | M10: Integrisan sistem - funkcionalna celina | milestone | 0d | 2022-11-21 | 2022-11-21 | 143 | 6d |  |
| 145 | 7 | **WP7 - Testiranje sistema** |  | 65d | 2022-11-21 | 2023-02-22 | 139 | 6d | 0d |
| 146 | 7.1 | **Jedinično testiranje** |  | 17d | 2022-11-21 | 2022-12-14 |  | 6d | 0d |
| 147 | 7.1.1 | Planiranje testova |  | 3d | 2022-11-21 | 2022-11-24 |  | 6d | 0d |
| 148 | 7.1.2 | Izrada testova |  | 7d | 2022-11-24 | 2022-12-05 | 147 | 6d | 0d |
| 149 | 7.1.3 | Testiranje |  | 7d | 2022-12-05 | 2022-12-14 | 148 | 6d |  |
| 150 | 7.2 | **Integraciono testiranje** |  | 17d | 2022-12-14 | 2023-01-06 | 146 | 6d | 0d |
| 151 | 7.2.1 | Planiranje testova |  | 3d | 2022-12-14 | 2022-12-19 |  | 6d | 0d |
| 152 | 7.2.2 | Izrada testova |  | 7d | 2022-12-19 | 2022-12-28 | 151 | 6d | 0d |
| 153 | 7.2.3 | Testiranje |  | 7d | 2022-12-28 | 2023-01-06 | 152 | 6d |  |

| ID | WBS | Task | Type | Duration | Start | Finish | Predecessors | Total slack | Free slack |
| --- | --- | --- | --- | --- | --- | --- | --- | --- | --- |
| 154 | 7.3 | **Sistemsko testiranje** |  | 17d | 2023-01-06 | 2023-01-31 | 150 | 6d | 0d |
| 155 | 7.3.1 | Planiranje testova |  | 3d | 2023-01-06 | 2023-01-11 |  | 6d | 0d |
| 156 | 7.3.2 | Izrada testova |  | 7d | 2023-01-11 | 2023-01-20 | 155 | 6d | 0d |
| 157 | 7.3.3 | Testiranje |  | 7d | 2023-01-20 | 2023-01-31 | 156 | 6d |  |
| 158 | 7.4 | **Performansno testiranje** |  | 5d | 2023-01-31 | 2023-02-07 | 154 | 15d |  |
| 159 | 7.4.1 | Testiranje opterećenja - Load testing |  | 5d | 2023-01-31 | 2023-02-07 |  | 15d |  |
| 160 | 7.4.2 | Stres testiranje - Stress testing |  | 5d | 2023-01-31 | 2023-02-07 |  | 15d |  |
| 161 | 7.5 | Testiranje sigurnosti sistema |  | 10d | 2023-01-31 | 2023-02-14 | 154 | 10d |  |
| 162 | 7.6 | **Test prihvatanja od strane korisnika** |  | 14d | 2023-01-31 | 2023-02-22 | 154 | 6d | 0d |
| 163 | 7.6.1 | Alfa testiranje |  | 7d | 2023-01-31 | 2023-02-09 |  | 6d | 0d |
| 164 | 7.6.2 | Beta testiranje |  | 7d | 2023-02-09 | 2023-02-22 | 163 | 6d |  |
| 165 | 7.7 | M11: Izveštaj testiranja | milestone | 0d | 2023-02-22 | 2023-02-22 | 162 | 6d |  |
| 166 | 8 | **WP8 - Дисиминација и експлоатација** |  | 43d | 2023-02-22 | 2023-04-26 | 145 | 6d |  |
| 167 | 8.1 | Izrada promotivnog materijala |  | 3d | 2023-02-22 | 2023-02-27 |  | 6d | 0d |
| 168 | 8.2 | Izrada vizuelnog projekta |  | 3d | 2023-02-22 | 2023-02-27 |  | 6d | 0d |
| 169 | 8.3 | Objavljivanje u medijima i na društvenim mrežama |  | 3d | 2023-02-22 | 2023-02-27 |  | 6d | 0d |
| 170 | 8.4 | **Organizovanje i učestvovanje na konferencijama** |  | 40d | 2023-02-27 | 2023-04-26 | 167, 168, 169 | 6d |  |
| 171 | 8.4.1 | Konferencija u San Francisku |  | 10d | 2023-02-27 | 2023-03-13 |  | 6d | 0d |
| 172 | 8.4.2 | Konferencija u Amsterdamu |  | 10d | 2023-03-13 | 2023-03-28 | 171 | 6d | 0d |
| 173 | 8.4.3 | Konferencija u Rimu |  | 7d | 2023-03-28 | 2023-04-06 | 172 | 19d |  |
| 174 | 8.4.4 | Konferencija u Londonu |  | 10d | 2023-03-28 | 2023-04-11 | 172 | 6d | 0d |
| 175 | 8.4.5 | Konferencija u Tokiju |  | 10d | 2023-04-11 | 2023-04-26 | 174 | 6d |  |
